# Baseline (Bid) – CPM

Schedule from an IFC model, 2026-11-05 to 2027-04-10.
WEC-TC-6901 งานก่อสร้างอาคารโกดังและงานบริเวณ

## Schedule

| ID | Activity | Duration | Start | Finish | Predecessors | Total float |
| --- | --- | --- | --- | --- | --- | --- |
| P0 | ยื่นราคา/อนุมัติจ้างงาน Preconstruction | 10d | 2026-11-05 | 2026-11-14 |  | 0d |
| P1 | สำรวจแนวเขตที่ดินและระดับเดิม (Topographic) | 4d | 2026-11-15 | 2026-11-18 | P0 | 2d |
| P3 | เจาะสำรวจดิน 3 หลุม x 30 ม. (SPT) | 7d | 2026-11-15 | 2026-11-21 | P0 | 0d |
| P2 | ถางป่า ขุดตอ ลอกหน้าดิน 0.20 ม. ระบายน้ำขัง | 15d | 2026-11-17 | 2026-12-01 | P1 SS+2d | 2d |
| P4 | ทดสอบห้องปฏิบัติการ + รายงานผลสำรวจดิน | 14d | 2026-11-22 | 2026-12-05 | P3 | 0d |
| P5 | สำรวจระดับหลังเคลียร์ (OGL) + ตารางดินถม | 2d | 2026-12-02 | 2026-12-03 | P2 | 2d |
| M0 | เซ็นสัญญางานหลัก / ส่ง Master schedule / Shop drawing | 6d | 2026-12-06 | 2026-12-11 | P4, P5 | 0d |
| M11 | Mobilization: รั้ว สำนักงานสนาม โรงเก็บ ไฟฟ้า-ประปาชั่วคราว | 8d | 2026-12-08 | 2026-12-15 | M0 SS+2d | 116d |
| M12 | วางผังอาคาร กริด 1-11/A-J ตั้งหมุด BM ±0.00 | 3d | 2026-12-12 | 2026-12-14 | M0 | 0d |
| M13 | ถมดินบดอัดหนา 0.30 ม. (1,114 ลบ.ม.) + ลานทำงานปั้นจั่น | 6d | 2026-12-13 | 2026-12-18 | M12 SS+1d | 0d |
| M21A | ตอกเข็มอาคาร I35x360 + I26x103 (2 ปั้นจั่น) | 26d | 2026-12-19 | 2027-01-13 | M13 | 0d |
| M21B | ตอกเข็มถังใต้ดิน I26x17 + หม้อแปลง I22x6 | 3d | 2027-01-14 | 2027-01-16 | M21A | 51d |
| M21C | ตอกเข็มพื้นถนนรอบอาคาร I22x249 | 14d | 2027-01-14 | 2027-01-27 | M21A | 28d |
| M21T | Dynamic Load Test 2 ต้น | 2d | 2026-12-29 | 2026-12-30 | M21A SS+10d | 101d |
| M22 | ขุดดิน ตัดหัวเข็ม ฐานราก F2P/F1P-1 | 18d | 2026-12-27 | 2027-01-13 | M21A SS+8d | 0d |
| M23 | เสาตอม่อ/เสา คสล. C1 0.30x0.50 ถึง +4.50 | 18d | 2027-01-02 | 2027-01-19 | M22 SS+6d | 0d |
| M24 | คานคอดิน B1 + Drop panel F1P 360 จุด + ทรายรองพื้น | 20d | 2027-01-06 | 2027-01-25 | M22 SS+10d | 20d |
| M26 | ถังเก็บน้ำใต้ดิน คสล. | 20d | 2027-01-17 | 2027-02-05 | M21B | 51d |
| M30 | ผลิตโครงเหล็ก (โรงงาน) เสา/โครงถัก/แป | 30d | 2026-12-22 | 2027-01-20 | M0 FS+10d | 19d |
| M31 | ติดตั้งเสาเหล็ก H250x175 บนหัวเสา คสล. | 8d | 2027-01-25 | 2027-02-01 | M23 FS+5d, M30 SS+15d | 0d |
| M32 | ยกติดตั้งโครงถัก 20 ชุด + ค้ำยัน | 16d | 2027-01-28 | 2027-02-12 | M31 SS+3d | 0d |
| M33 | ติดตั้งแปหลังคา/แปผนัง | 10d | 2027-02-03 | 2027-02-12 | M32 SS+6d | 0d |
| M34 | มุงหลังคาเมทัลชีท + ฉนวน + Jack roof + รางน้ำ | 18d | 2027-02-07 | 2027-02-24 | M33 SS+4d | 0d |
| M25 | เทพื้น S1 (6 โซน) + Floor hardener ใต้หลังคา | 24d | 2027-02-15 | 2027-03-10 | M24, M34 SS+8d | 0d |
| M36 | ผนังก่ออิฐ/ฉาบ ถึง +4.50 | 22d | 2027-02-23 | 2027-03-16 | M25 SS+8d | 0d |
| M37 | ผนังเมทัลชีท +5.20 ถึงหลังคา/จั่ว | 12d | 2027-02-13 | 2027-02-24 | M33 | 32d |
| M35 | ชั้นลอย F8 (โครงเหล็ก พื้น บันได) | 14d | 2027-02-25 | 2027-03-10 | M25 SS+10d | 18d |
| M39 | ห้อง MDB / ห้องประกอบ แนวกริด A | 18d | 2027-02-28 | 2027-03-17 | M36 SS+5d | 11d |
| M44 | อาคารประกอบ: ห้องน้ำ / ห้องเก็บสารเคมี | 25d | 2027-01-14 | 2027-02-07 | M22 | 49d |
| M38 | ประตูม้วน ประตู-หน้าต่าง ทาสี | 12d | 2027-03-17 | 2027-03-28 | M36 | 0d |
| M41 | ฐาน F1A 249 จุด รับพื้นถนน | 12d | 2027-01-28 | 2027-02-08 | M21C | 28d |
| M46 | รางระบายน้ำ คสล. พร้อมฝาปิด | 15d | 2027-02-01 | 2027-02-15 | M41 SS+4d | 41d |
| M45 | ฐานหม้อแปลง | 6d | 2027-01-20 | 2027-01-25 | M21B FS+3d | 62d |
| M42 | พื้นถนนรอบอาคาร S2 2,440 ตร.ม. | 20d | 2027-02-25 | 2027-03-16 | M41, M34 | 12d |
| M43 | ทางลาดขนส่ง 2 จุด | 6d | 2027-03-11 | 2027-03-16 | M42 SS+6d, M25 | 12d |
| M51 | ทดสอบระบบ ตรวจรับ แก้ไขงาน (Punch list) | 8d | 2027-03-29 | 2027-04-05 | M38, M42, M39, M35, M44, M43, M46, M37, M45, M26 | 0d |
| M52 | รื้อถอนสิ่งชั่วคราว ทำความสะอาด ส่งมอบ + As-built | 5d | 2027-04-06 | 2027-04-10 | M51 | 0d |

Notes:
- P0: WBS P / ยื่น 5 พ.ย. 69 เข้างานภายใน 2 สัปดาห์
- P1: WBS P1 / ทีมสำรวจ 3 คน + กล้อง Total Station
- P3: WBS P3 / รถเจาะ Wash boring 1 ชุด
- P2: WBS P2 / รถขุด 1 คัน + รถบรรทุก 3 คัน
- P4: WBS P3 / วิศวกรธรณีเทคนิค
- P5: WBS P1 / ทีมสำรวจ
- M0: WBS 1 / ยื่นราคางานหลัก 15 พ.ย. 69
- M11: WBS 1.2 / ช่างไม้/เหล็ก 8 คน
- M12: WBS 1.1 / ทีมสำรวจ
- M13: WBS 1.3 / รถเกลี่ย/รถบด/รถบรรทุก 6 คัน ~ 250 ลบ.ม./วัน + ทดสอบ FDT 16 จุด
- M21A: WBS 2.1 / ปั้นจั่น 2 ชุด x ~9 ต้น/วัน (เข็ม 22 ม. ต่อ 2 ท่อน)
- M21B: WBS 2.1 / ปั้นจั่น 1 ชุด
- M21C: WBS 4.1 / ปั้นจั่น 2 ชุด x ~9 ต้น/วัน
- M21T: WBS 1.4 / หน่วยงานทดสอบ
- M22: WBS 2.2 / ทีมโครงสร้าง A 15 คน
- M23: WBS 2.2 / ทีมโครงสร้าง A
- M24: WBS 2.3 / ทีมโครงสร้าง B 15 คน
- M26: WBS 4.4 / ทีมโครงสร้าง C 8 คน
- M30: WBS 2.4 / โรงงานผู้รับเหมาช่วง ~95 ตัน
- M31: WBS 2.4 / รถเครน 25 ตัน + ทีมเหล็ก 10 คน
- M32: WBS 2.4 / รถเครน 2 คัน
- M33: WBS 2.4 / ทีมเหล็ก
- M34: WBS 3.1 / ทีมหลังคา 12 คน
- M25: WBS 2.3 / ทีมพื้น + ปั๊มคอนกรีต ~640 ลบ.ม.
- M36: WBS 3.2 / ช่างปูน 12 คน
- M37: WBS 3.1 / ทีมหลังคา
- M35: WBS 3.6 / ทีมเหล็ก
- M39: WBS 3.6 / ช่างปูน/ไม้
- M44: WBS 2.5 / ทีมอาคารประกอบ 8 คน
- M38: WBS 3.4 / ผู้รับเหมาช่วง
- M41: WBS 4.1 / ทีมโครงสร้าง C
- M46: WBS 4.5 / ทีมภายนอก
- M45: WBS 4.3 / ทีมภายนอก
- M42: WBS 4.1 / ทีมพื้น ~366 ลบ.ม.
- M43: WBS 4.2 / ทีมพื้น
- M51: WBS 1.5 / ทีมบริหารโครงการ
- M52: WBS 1.5 /
